# WBSchart2

Schedule from MS Project, 2010-03-08 to 2010-09-06.

## Calendars

- Estándar: Mon-Fri 09:00-13:00, 15:00-19:00; Sat-Sun off.

## Resources

| Resource |
| --- |
| Country Manager |
| Silvia Torero |
| Lissette Davila |
| Enrique Madrid |
| Gerardo Buytron |
| Marco Soto |
| Aplicativo móvil |
| Impresoras |
| Documentos de venta |

## Schedule

| ID | WBS | Task | Duration | Start | Finish | Total slack | Constraint | Resources | Work |
| --- | --- | --- | --- | --- | --- | --- | --- | --- | --- |
| 1 | 1 | **Proyecto inVenta** | 130.12d | 2010-03-08 09:00 | 2010-09-06 10:00 | 0d |  |  | 838h |
| 2 | 1.1 | **1.0 Gestion del Proyecto** | 130.12d | 2010-03-08 09:00 | 2010-09-06 10:00 | 0d |  |  | 118h |
| 3 | 1.1.1 | **1.1 Iniciacion** | 22.17d | 2010-03-08 10:00 | 2010-04-07 11:20 | 107.83d |  |  | 9h |
| 4 | 1.1.1.1 | **1.1.1 Project Charter** | 22.17d | 2010-03-08 10:00 | 2010-04-07 11:20 | 107.83d |  |  | 5h |
| 5 | 1.1.1.1.1 | 1.1.1.A01 Reunion con el sponsor | 2h | 2010-03-08 10:00 | 2010-03-10 11:00 | 127.88d |  | Country Manager; Enrique Madrid | 2h |
| 6 | 1.1.1.1.2 | 1.1.1 A02 Elaborar Project Charter | 2h | 2010-04-07 09:20 | 2010-04-07 11:20 | 107.83d |  | Enrique Madrid | 2h |
| 7 | 1.1.1.1.3 | 1.1.1.A03 Revisar Project Charter | 1h | 2010-03-17 15:00 | 2010-03-17 16:00 | 122.5d |  | Country Manager | 1h |
| 8 | 1.1.1.2 | **1.1.2 Scope Statement** | 21.92d | 2010-03-08 11:00 | 2010-04-07 10:20 | 107.96d |  |  | 4h |
| 9 | 1.1.1.2.1 | 1.1.2.A01 Reunion con el sponsor | 2h | 2010-03-08 11:00 | 2010-03-10 12:00 | 127.75d |  | Country Manager; Enrique Madrid | 2h |
| 10 | 1.1.1.2.2 | 1.1.2.A02 Elaborar el Scope Statement | 1h | 2010-04-07 09:20 | 2010-04-07 10:20 | 107.96d |  | Enrique Madrid | 1h |
| 11 | 1.1.1.2.3 | 1.1.2.A03 Revisar el Scope Statement | 1h | 2010-03-17 15:00 | 2010-03-17 16:00 | 122.5d |  | Country Manager | 1h |
| 12 | 1.1.2 | **1.2 Plan del Proyecto** | 3.12d | 2010-03-10 12:00 | 2010-03-15 13:00 | 124.62d |  |  | 24h |
| 13 | 1.1.2.1 | 1.2.A01 Elaborar el plan del Proyecto | 24h | 2010-03-10 12:00 | 2010-03-15 13:00 | 124.62d |  | Enrique Madrid | 24h |
| 14 | 1.1.3 | **1.3 Informes del estado del proyecto** | 130.12d | 2010-03-08 09:00 | 2010-09-06 10:00 | 0d |  |  | 27h |
| 15 | 1.1.3.1 | 1.3 Informes del estado del proyecto 1 | 1h | 2010-03-08 09:00 | 2010-03-08 10:00 | 130d | start no earlier than 2010-03-08 08:00 | Enrique Madrid | 1h |
| 16 | 1.1.3.2 | 1.3 Informes del estado del proyecto 2 | 1h | 2010-03-15 09:00 | 2010-03-15 10:00 | 125d | start no earlier than 2010-03-15 08:00 | Enrique Madrid | 1h |
| 17 | 1.1.3.3 | 1.3 Informes del estado del proyecto 3 | 1h | 2010-03-22 09:00 | 2010-03-22 10:00 | 120d | start no earlier than 2010-03-22 08:00 | Enrique Madrid | 1h |
| 18 | 1.1.3.4 | 1.3 Informes del estado del proyecto 4 | 1h | 2010-03-29 09:00 | 2010-03-29 10:00 | 115d | start no earlier than 2010-03-29 08:00 | Enrique Madrid | 1h |
| 19 | 1.1.3.5 | 1.3 Informes del estado del proyecto 5 | 1h | 2010-04-05 09:00 | 2010-04-05 10:00 | 110d | start no earlier than 2010-04-05 08:00 | Enrique Madrid | 1h |
| 20 | 1.1.3.6 | 1.3 Informes del estado del proyecto 6 | 1h | 2010-04-12 09:00 | 2010-04-12 10:00 | 105d | start no earlier than 2010-04-12 08:00 | Enrique Madrid | 1h |
| 21 | 1.1.3.7 | 1.3 Informes del estado del proyecto 7 | 1h | 2010-04-19 09:00 | 2010-04-19 10:00 | 100d | start no earlier than 2010-04-19 08:00 | Enrique Madrid | 1h |
| 22 | 1.1.3.8 | 1.3 Informes del estado del proyecto 8 | 1h | 2010-04-26 09:00 | 2010-04-26 10:00 | 95d | start no earlier than 2010-04-26 08:00 | Enrique Madrid | 1h |
| 23 | 1.1.3.9 | 1.3 Informes del estado del proyecto 9 | 1h | 2010-05-03 09:00 | 2010-05-03 10:00 | 90d | start no earlier than 2010-05-03 08:00 | Enrique Madrid | 1h |
| 24 | 1.1.3.10 | 1.3 Informes del estado del proyecto 10 | 1h | 2010-05-10 09:00 | 2010-05-10 10:00 | 85d | start no earlier than 2010-05-10 08:00 | Enrique Madrid | 1h |
| 25 | 1.1.3.11 | 1.3 Informes del estado del proyecto 11 | 1h | 2010-05-17 09:00 | 2010-05-17 10:00 | 80d | start no earlier than 2010-05-17 08:00 | Enrique Madrid | 1h |
| 26 | 1.1.3.12 | 1.3 Informes del estado del proyecto 12 | 1h | 2010-05-24 09:00 | 2010-05-24 10:00 | 75d | start no earlier than 2010-05-24 08:00 | Enrique Madrid | 1h |
| 27 | 1.1.3.13 | 1.3 Informes del estado del proyecto 13 | 1h | 2010-05-31 09:00 | 2010-05-31 10:00 | 70d | start no earlier than 2010-05-31 08:00 | Enrique Madrid | 1h |
| 28 | 1.1.3.14 | 1.3 Informes del estado del proyecto 14 | 1h | 2010-06-07 09:00 | 2010-06-07 10:00 | 65d | start no earlier than 2010-06-07 08:00 | Enrique Madrid | 1h |
| 29 | 1.1.3.15 | 1.3 Informes del estado del proyecto 15 | 1h | 2010-06-14 09:00 | 2010-06-14 10:00 | 60d | start no earlier than 2010-06-14 08:00 | Enrique Madrid | 1h |
| 30 | 1.1.3.16 | 1.3 Informes del estado del proyecto 16 | 1h | 2010-06-21 09:00 | 2010-06-21 10:00 | 55d | start no earlier than 2010-06-21 08:00 | Enrique Madrid | 1h |
| 31 | 1.1.3.17 | 1.3 Informes del estado del proyecto 17 | 1h | 2010-06-28 09:00 | 2010-06-28 10:00 | 50d | start no earlier than 2010-06-28 08:00 | Enrique Madrid | 1h |
| 32 | 1.1.3.18 | 1.3 Informes del estado del proyecto 18 | 1h | 2010-07-05 09:00 | 2010-07-05 10:00 | 45d | start no earlier than 2010-07-05 08:00 | Enrique Madrid | 1h |
| 33 | 1.1.3.19 | 1.3 Informes del estado del proyecto 19 | 1h | 2010-07-12 09:00 | 2010-07-12 10:00 | 40d | start no earlier than 2010-07-12 08:00 | Enrique Madrid | 1h |
| 34 | 1.1.3.20 | 1.3 Informes del estado del proyecto 20 | 1h | 2010-07-19 09:00 | 2010-07-19 10:00 | 35d | start no earlier than 2010-07-19 08:00 | Enrique Madrid | 1h |
| 35 | 1.1.3.21 | 1.3 Informes del estado del proyecto 21 | 1h | 2010-07-26 09:00 | 2010-07-26 10:00 | 30d | start no earlier than 2010-07-26 08:00 | Enrique Madrid | 1h |
| 36 | 1.1.3.22 | 1.3 Informes del estado del proyecto 22 | 1h | 2010-08-02 09:00 | 2010-08-02 10:00 | 25d | start no earlier than 2010-08-02 08:00 | Enrique Madrid | 1h |
| 37 | 1.1.3.23 | 1.3 Informes del estado del proyecto 23 | 1h | 2010-08-09 09:00 | 2010-08-09 10:00 | 20d | start no earlier than 2010-08-09 08:00 | Enrique Madrid | 1h |
| 38 | 1.1.3.24 | 1.3 Informes del estado del proyecto 24 | 1h | 2010-08-16 09:00 | 2010-08-16 10:00 | 15d | start no earlier than 2010-08-16 08:00 | Enrique Madrid | 1h |
| 39 | 1.1.3.25 | 1.3 Informes del estado del proyecto 25 | 1h | 2010-08-23 09:00 | 2010-08-23 10:00 | 10d | start no earlier than 2010-08-23 08:00 | Enrique Madrid | 1h |
| 40 | 1.1.3.26 | 1.3 Informes del estado del proyecto 26 | 1h | 2010-08-30 09:00 | 2010-08-30 10:00 | 5d | start no earlier than 2010-08-30 08:00 | Enrique Madrid | 1h |
| 41 | 1.1.3.27 | 1.3 Informes del estado del proyecto 27 | 1h | 2010-09-06 09:00 | 2010-09-06 10:00 | 0d | start no earlier than 2010-09-06 08:00 | Enrique Madrid | 1h |

| ID | WBS | Task | Duration | Start | Finish | Total slack | Constraint | Resources | Work |
| --- | --- | --- | --- | --- | --- | --- | --- | --- | --- |
| 42 | 1.1.4 | **1.4 Reunión de Coordinación Semanal** | 130.12d | 2010-03-08 09:00 | 2010-09-06 10:00 | 0d |  |  | 54h |
| 43 | 1.1.4.1 | 1.4 Reunión de Coordinación Semanal 1 | 1h | 2010-03-08 09:00 | 2010-03-08 10:00 | 130d | start no earlier than 2010-03-08 08:00 | Enrique Madrid; Country Manager | 2h |
| 44 | 1.1.4.2 | 1.4 Reunión de Coordinación Semanal 2 | 1h | 2010-03-15 09:00 | 2010-03-15 10:00 | 125d | start no earlier than 2010-03-15 08:00 | Enrique Madrid; Country Manager | 2h |
| 45 | 1.1.4.3 | 1.4 Reunión de Coordinación Semanal 3 | 1h | 2010-03-22 09:00 | 2010-03-22 10:00 | 120d | start no earlier than 2010-03-22 08:00 | Enrique Madrid; Country Manager | 2h |
| 46 | 1.1.4.4 | 1.4 Reunión de Coordinación Semanal 4 | 1h | 2010-03-29 09:00 | 2010-03-29 10:00 | 115d | start no earlier than 2010-03-29 08:00 | Enrique Madrid; Country Manager | 2h |
| 47 | 1.1.4.5 | 1.4 Reunión de Coordinación Semanal 5 | 1h | 2010-04-05 09:00 | 2010-04-05 10:00 | 110d | start no earlier than 2010-04-05 08:00 | Enrique Madrid; Country Manager | 2h |
| 48 | 1.1.4.6 | 1.4 Reunión de Coordinación Semanal 6 | 1h | 2010-04-12 09:00 | 2010-04-12 10:00 | 105d | start no earlier than 2010-04-12 08:00 | Enrique Madrid; Country Manager | 2h |
| 49 | 1.1.4.7 | 1.4 Reunión de Coordinación Semanal 7 | 1h | 2010-04-19 09:00 | 2010-04-19 10:00 | 100d | start no earlier than 2010-04-19 08:00 | Enrique Madrid; Country Manager | 2h |
| 50 | 1.1.4.8 | 1.4 Reunión de Coordinación Semanal 8 | 1h | 2010-04-26 09:00 | 2010-04-26 10:00 | 95d | start no earlier than 2010-04-26 08:00 | Enrique Madrid; Country Manager | 2h |
| 51 | 1.1.4.9 | 1.4 Reunión de Coordinación Semanal 9 | 1h | 2010-05-03 09:00 | 2010-05-03 10:00 | 90d | start no earlier than 2010-05-03 08:00 | Enrique Madrid; Country Manager | 2h |
| 52 | 1.1.4.10 | 1.4 Reunión de Coordinación Semanal 10 | 1h | 2010-05-10 09:00 | 2010-05-10 10:00 | 85d | start no earlier than 2010-05-10 08:00 | Enrique Madrid; Country Manager | 2h |
| 53 | 1.1.4.11 | 1.4 Reunión de Coordinación Semanal 11 | 1h | 2010-05-17 09:00 | 2010-05-17 10:00 | 80d | start no earlier than 2010-05-17 08:00 | Enrique Madrid; Country Manager | 2h |
| 54 | 1.1.4.12 | 1.4 Reunión de Coordinación Semanal 12 | 1h | 2010-05-24 09:00 | 2010-05-24 10:00 | 75d | start no earlier than 2010-05-24 08:00 | Enrique Madrid; Country Manager | 2h |
| 55 | 1.1.4.13 | 1.4 Reunión de Coordinación Semanal 13 | 1h | 2010-05-31 09:00 | 2010-05-31 10:00 | 70d | start no earlier than 2010-05-31 08:00 | Enrique Madrid; Country Manager | 2h |
| 56 | 1.1.4.14 | 1.4 Reunión de Coordinación Semanal 14 | 1h | 2010-06-07 09:00 | 2010-06-07 10:00 | 65d | start no earlier than 2010-06-07 08:00 | Enrique Madrid; Country Manager | 2h |
| 57 | 1.1.4.15 | 1.4 Reunión de Coordinación Semanal 15 | 1h | 2010-06-14 09:00 | 2010-06-14 10:00 | 60d | start no earlier than 2010-06-14 08:00 | Enrique Madrid; Country Manager | 2h |
| 58 | 1.1.4.16 | 1.4 Reunión de Coordinación Semanal 16 | 1h | 2010-06-21 09:00 | 2010-06-21 10:00 | 55d | start no earlier than 2010-06-21 08:00 | Enrique Madrid; Country Manager | 2h |
| 59 | 1.1.4.17 | 1.4 Reunión de Coordinación Semanal 17 | 1h | 2010-06-28 09:00 | 2010-06-28 10:00 | 50d | start no earlier than 2010-06-28 08:00 | Enrique Madrid; Country Manager | 2h |
| 60 | 1.1.4.18 | 1.4 Reunión de Coordinación Semanal 18 | 1h | 2010-07-05 09:00 | 2010-07-05 10:00 | 45d | start no earlier than 2010-07-05 08:00 | Enrique Madrid; Country Manager | 2h |
| 61 | 1.1.4.19 | 1.4 Reunión de Coordinación Semanal 19 | 1h | 2010-07-12 09:00 | 2010-07-12 10:00 | 40d | start no earlier than 2010-07-12 08:00 | Enrique Madrid; Country Manager | 2h |
| 62 | 1.1.4.20 | 1.4 Reunión de Coordinación Semanal 20 | 1h | 2010-07-19 09:00 | 2010-07-19 10:00 | 35d | start no earlier than 2010-07-19 08:00 | Enrique Madrid; Country Manager | 2h |
| 63 | 1.1.4.21 | 1.4 Reunión de Coordinación Semanal 21 | 1h | 2010-07-26 09:00 | 2010-07-26 10:00 | 30d | start no earlier than 2010-07-26 08:00 | Enrique Madrid; Country Manager | 2h |
| 64 | 1.1.4.22 | 1.4 Reunión de Coordinación Semanal 22 | 1h | 2010-08-02 09:00 | 2010-08-02 10:00 | 25d | start no earlier than 2010-08-02 08:00 | Enrique Madrid; Country Manager | 2h |
| 65 | 1.1.4.23 | 1.4 Reunión de Coordinación Semanal 23 | 1h | 2010-08-09 09:00 | 2010-08-09 10:00 | 20d | start no earlier than 2010-08-09 08:00 | Enrique Madrid; Country Manager | 2h |
| 66 | 1.1.4.24 | 1.4 Reunión de Coordinación Semanal 24 | 1h | 2010-08-16 09:00 | 2010-08-16 10:00 | 15d | start no earlier than 2010-08-16 08:00 | Enrique Madrid; Country Manager | 2h |
| 67 | 1.1.4.25 | 1.4 Reunión de Coordinación Semanal 25 | 1h | 2010-08-23 09:00 | 2010-08-23 10:00 | 10d | start no earlier than 2010-08-23 08:00 | Enrique Madrid; Country Manager | 2h |
| 68 | 1.1.4.26 | 1.4 Reunión de Coordinación Semanal 26 | 1h | 2010-08-30 09:00 | 2010-08-30 10:00 | 5d | start no earlier than 2010-08-30 08:00 | Enrique Madrid; Country Manager | 2h |
| 69 | 1.1.4.27 | 1.4 Reunión de Coordinación Semanal 27 | 1h | 2010-09-06 09:00 | 2010-09-06 10:00 | 0d | start no earlier than 2010-09-06 08:00 | Enrique Madrid; Country Manager | 2h |

| ID | WBS | Task | Duration | Start | Finish | Total slack | Resources | Work |
| --- | --- | --- | --- | --- | --- | --- | --- | --- |
| 70 | 1.1.5 | **1.5 Cierre del Proyecto** | 0.5d | 2010-04-06 15:20 | 2010-04-07 09:20 | 108.08d |  | 4h |
| 71 | 1.1.5.1 | 1.5.A01 Elaborar documentos de cierre del proyecto | 4h | 2010-04-06 15:20 | 2010-04-07 09:20 | 108.08d | Enrique Madrid | 4h |
| 72 | 1.2 | **2.0 Analisis** | 7.88d | 2010-03-08 10:00 | 2010-03-17 19:00 | 122.12d |  | 48h |
| 73 | 1.2.1 | **2.1 Listado de necesidades** | 7.88d | 2010-03-08 10:00 | 2010-03-17 19:00 | 122.12d |  | 48h |
| 74 | 1.2.1.1 | 2.1.A01 Determinar las necesidades del servicio | 2d | 2010-03-15 15:00 | 2010-03-17 19:00 | 122.12d | Enrique Madrid; Gerardo Buytron | 16h |
| 75 | 1.2.1.2 | 2.1.A02 Determinar las especificaciones y requerimientos | 4d | 2010-03-08 10:00 | 2010-03-16 19:00 | 123.12d | Enrique Madrid; Gerardo Buytron | 32h |
| 76 | 1.3 | **3.0 Licitacion y Adquisicion** | 60d | 2010-03-08 09:00 | 2010-05-28 19:00 | 70.12d |  | 312h |
| 77 | 1.3.1 | **3.1 Licitacion** | 27.33d | 2010-03-08 09:00 | 2010-04-14 11:40 | 102.79d |  | 208h |
| 78 | 1.3.1.1 | **3.1.1 Análisis de mercado** | 5d | 2010-04-05 11:40 | 2010-04-12 11:40 | 104.79d |  | 40h |
| 79 | 1.3.1.1.1 | 3.1.1.A01 Determinar la capacidad interna y de los costos | 1d | 2010-04-05 11:40 | 2010-04-06 11:40 | 108.79d | Gerardo Buytron | 8h |
| 80 | 1.3.1.1.2 | 3.1.1.A02 Identificar proveedores calificados | 1d | 2010-04-06 11:40 | 2010-04-07 11:40 | 107.79d | Gerardo Buytron | 8h |
| 81 | 1.3.1.1.3 | 3.1.1.A03 Elaborar RFI | 1d | 2010-04-07 11:40 | 2010-04-08 11:40 | 106.79d | Gerardo Buytron | 8h |
| 82 | 1.3.1.1.4 | 3.1.1.A04 Recepcionar RFIs | 1d | 2010-04-08 11:40 | 2010-04-09 11:40 | 105.79d | Gerardo Buytron | 8h |
| 83 | 1.3.1.1.5 | 3.1.1.A05 Decisiones | 1d | 2010-04-09 11:40 | 2010-04-12 11:40 | 104.79d | Gerardo Buytron | 8h |
| 84 | 1.3.1.2 | **3.1.2 Solicitud de propuesta (RFP)** | 4d | 2010-03-26 11:40 | 2010-04-01 11:40 | 111.79d |  | 32h |
| 85 | 1.3.1.2.1 | 3.1.2.A01 Desarrollar el criterio de solucion | 2d | 2010-03-26 11:40 | 2010-03-30 11:40 | 113.79d | Gerardo Buytron | 16h |
| 86 | 1.3.1.2.2 | 3.1.2.A02 Desarrollar las bases tecnicas | 2d | 2010-03-30 11:40 | 2010-04-01 11:40 | 111.79d | Gerardo Buytron | 16h |
| 87 | 1.3.1.3 | **3.1.3 Carta de Intención (LOI)** | 27.33d | 2010-03-08 09:00 | 2010-04-14 11:40 | 102.79d |  | 136h |
| 88 | 1.3.1.3.1 | 3.1.3.A01 Emitir el RFQ | 0.83d | 2010-03-18 15:00 | 2010-03-19 11:40 | 120.79d | Gerardo Buytron; Enrique Madrid | 8h |
| 89 | 1.3.1.3.2 | 3.1.3.A02 Emitir el RFP | 1.5d | 2010-03-17 15:00 | 2010-03-18 19:00 | 121.12d | Gerardo Buytron; Enrique Madrid | 16h |
| 90 | 1.3.1.3.3 | 3.1.3.A03 Recibir ofertas | 5d | 2010-03-08 09:00 | 2010-03-12 19:00 | 125.12d | Gerardo Buytron | 40h |
| 91 | 1.3.1.3.4 | 3.1.3.A04 Evaluar Respuestas | 5d | 2010-03-19 11:40 | 2010-03-26 11:40 | 115.79d | Gerardo Buytron | 40h |
| 92 | 1.3.1.3.5 | 3.1.3.A05 Calificar proveedores | 2d | 2010-04-01 11:40 | 2010-04-05 11:40 | 109.79d | Gerardo Buytron | 16h |
| 93 | 1.3.1.3.6 | 3.1.3.A06 Adjudicar/Seleccionar Proveedores | 1d | 2010-04-12 11:40 | 2010-04-13 11:40 | 103.79d | Gerardo Buytron | 8h |
| 94 | 1.3.1.3.7 | 3.1.3.A07 Emitir Carta de Intención (LOI) | 1d | 2010-04-13 11:40 | 2010-04-14 11:40 | 102.79d | Gerardo Buytron | 8h |

| ID | WBS | Task | Duration | Start | Finish | Total slack | Resources | Work |
| --- | --- | --- | --- | --- | --- | --- | --- | --- |
| 95 | 1.3.2 | **3.2 Adquisicion** | 60d | 2010-03-08 09:00 | 2010-05-28 19:00 | 70.12d |  | 104h |
| 96 | 1.3.2.1 | **3.2.1 Contrato Solucion Movil** | 10d | 2010-03-08 09:00 | 2010-03-19 19:00 | 120.12d |  | 28h |
| 97 | 1.3.2.1.1 | 3.2.1.A01 Desarrollar el contrato marco | 2.5d | 2010-03-08 09:00 | 2010-03-10 13:00 | 127.62d | Silvia Torero | 20h |
| 98 | 1.3.2.1.2 | 3.2.1.A02 Determinar cronograma | 0.5d | 2010-03-19 09:00 | 2010-03-19 13:00 | 120.62d | Silvia Torero | 4h |
| 99 | 1.3.2.1.3 | 3.2.1.A03 Determinar el presupuesto | 0.5d | 2010-03-19 15:00 | 2010-03-19 19:00 | 120.12d | Silvia Torero | 4h |
| 100 | 1.3.2.2 | **3.2.2 Contrato equipos y suministros** | 8.5d | 2010-03-10 15:00 | 2010-03-22 19:00 | 119.12d |  | 28h |
| 101 | 1.3.2.2.1 | 3.2.2.A01 Desarrollar el contrato marco | 2.5d | 2010-03-10 15:00 | 2010-03-12 19:00 | 125.12d | Silvia Torero | 20h |
| 102 | 1.3.2.2.2 | 3.2.2.A02 Determinar cronograma | 0.5d | 2010-03-22 09:00 | 2010-03-22 13:00 | 119.62d | Silvia Torero | 4h |
| 103 | 1.3.2.2.3 | 3.2.2.A03 Determinar el presupuesto | 0.5d | 2010-03-22 15:00 | 2010-03-22 19:00 | 119.12d | Silvia Torero | 4h |
| 104 | 1.3.2.3 | **3.2.3 Orden de Compra solucion movil** | 1d | 2010-03-23 09:00 | 2010-03-23 19:00 | 118.12d |  | 8h |
| 105 | 1.3.2.3.1 | 3.2.3.A01 Solicitar la aprobacion del gasto | 0.5d | 2010-03-23 09:00 | 2010-03-23 13:00 | 118.62d | Silvia Torero | 4h |
| 106 | 1.3.2.3.2 | 3.2.3.A02 Solicitar la emision de la orden de compra | 0.5d | 2010-03-23 15:00 | 2010-03-23 19:00 | 118.12d | Silvia Torero | 4h |
| 107 | 1.3.2.4 | **3.2.4 Orden de compra equipos y suministros** | 0.5d | 2010-03-24 09:00 | 2010-03-24 13:00 | 117.62d |  | 8h |
| 108 | 1.3.2.4.1 | 3.2.4.A01 Solicitar la aprobacion del gasto | 0.5d | 2010-03-24 09:00 | 2010-03-24 13:00 | 117.62d | Silvia Torero | 4h |
| 109 | 1.3.2.4.2 | 3.2.4.A02 Solicitar la emision de la orden de compra | 0.5d | 2010-03-24 09:00 | 2010-03-24 13:00 | 117.62d | Silvia Torero | 4h |
| 110 | 1.3.2.5 | **3.2.5 Aplicativo movil** | 60d | 2010-03-08 09:00 | 2010-05-28 19:00 | 70.12d |  | 16h |
| 111 | 1.3.2.5.1 | 3.2.5.A01 Construcción aplicativo móvil | 60d | 2010-03-08 09:00 | 2010-05-28 19:00 | 70.12d | Aplicativo móvil [0.1%] |  |
| 112 | 1.3.2.5.2 | 3.2.5.A02 Aprobacion del aplicativo movil | 2d | 2010-03-15 09:00 | 2010-03-16 19:00 | 123.12d | Silvia Torero | 16h |
| 113 | 1.3.2.6 | **3.2.6 Equipos y suministros** | 30d | 2010-03-08 09:00 | 2010-04-16 19:00 | 100.12d |  | 16h |
| 114 | 1.3.2.6.1 | 3.2.5.A01 Importación de impresoras | 30d | 2010-03-08 09:00 | 2010-04-16 19:00 | 100.12d | Impresoras [0.1%] |  |
| 115 | 1.3.2.6.2 | 3.2.5.A02 Impresión de documentos de venta | 20d | 2010-03-08 09:00 | 2010-04-02 19:00 | 110.12d | Documentos de venta [0.1%] |  |
| 116 | 1.3.2.6.3 | 3.2.6.A03 Aprobacion de los equipos y suministros | 2d | 2010-03-17 09:00 | 2010-03-18 19:00 | 121.12d | Silvia Torero | 16h |
| 117 | 1.4 | **4.0 Implementacion** | 20d | 2010-03-08 09:00 | 2010-04-02 19:00 | 110.12d |  | 184h |
| 118 | 1.4.1 | **4.1 Etapa 1** | 10d | 2010-03-12 09:00 | 2010-03-25 19:00 | 116.12d |  | 48h |
| 119 | 1.4.1.1 | **4.1.1 Solucion Movil implementada** | 9d | 2010-03-12 09:00 | 2010-03-24 19:00 | 117.12d |  | 32h |
| 120 | 1.4.1.1.1 | 4.1.1.A01 Implementar la solución móvil en la empresa | 2d | 2010-03-12 09:00 | 2010-03-15 19:00 | 124.12d | Marco Soto | 16h |
| 121 | 1.4.1.1.2 | 4.1.1.A02 Integrar la solución móvil la backend de la empresa | 1d | 2010-03-23 09:00 | 2010-03-23 19:00 | 118.12d | Marco Soto | 8h |
| 122 | 1.4.1.1.3 | 4.1.1.A03 Realizar pruebas en el sistema antes de la implementacion | 1d | 2010-03-24 09:00 | 2010-03-24 19:00 | 117.12d | Marco Soto | 8h |

| ID | WBS | Task | Duration | Start | Finish | Total slack | Resources | Work |
| --- | --- | --- | --- | --- | --- | --- | --- | --- |
| 123 | 1.4.1.2 | **4.1.2 Reporte implementacion** | 4.83d | 2010-03-19 10:20 | 2010-03-25 19:00 | 116.12d |  | 16h |
| 124 | 1.4.1.2.1 | 4.1.2.A01 Elaborar el reporte de la etapa 1 | 1d | 2010-03-25 09:00 | 2010-03-25 19:00 | 116.12d | Marco Soto | 8h |
| 125 | 1.4.1.2.2 | 4.1.2.A02 Revisar el reporte de la etapa 1 | 1d | 2010-03-19 10:20 | 2010-03-22 11:20 | 119.83d | Enrique Madrid | 8h |
| 126 | 1.4.2 | **4.2 Etapa 2** | 11d | 2010-03-16 09:00 | 2010-03-30 19:00 | 113.12d |  | 48h |
| 127 | 1.4.2.1 | **4.2.1 Terminales móviles operativos** | 10d | 2010-03-16 09:00 | 2010-03-29 19:00 | 114.12d |  | 32h |
| 128 | 1.4.2.1.1 | 4.2.1.A01 Identificar a los usuarios de aplicativo móvil | 1d | 2010-03-26 09:00 | 2010-03-26 19:00 | 115.12d | Marco Soto | 8h |
| 129 | 1.4.2.1.2 | 4.2.1.A02 Entregar terminales móviles a usuarios | 1d | 2010-03-29 09:00 | 2010-03-29 19:00 | 114.12d | Marco Soto | 8h |
| 130 | 1.4.2.1.3 | 4.2.1.A03 Validar la operatividad del aplicativo móvil | 2d | 2010-03-16 09:00 | 2010-03-17 19:00 | 122.12d | Marco Soto | 16h |
| 131 | 1.4.2.2 | **4.2.2 Reporte implementacion de terminales** | 6.71d | 2010-03-22 11:20 | 2010-03-30 19:00 | 113.12d |  | 16h |
| 132 | 1.4.2.2.1 | 4.2.2.A01 Elaborar el reporte de la etapa 2 | 1d | 2010-03-30 09:00 | 2010-03-30 19:00 | 113.12d | Marco Soto | 8h |
| 133 | 1.4.2.2.2 | 4.2.2.A02 Revisar el reporte de la etapa 2 | 1d | 2010-03-22 11:20 | 2010-03-23 11:20 | 118.83d | Enrique Madrid | 8h |
| 134 | 1.4.3 | **4.3 Etapa 3** | 19d | 2010-03-08 09:00 | 2010-04-01 19:00 | 111.12d |  | 72h |
| 135 | 1.4.3.1 | **4.3.1 Impresoras y suminitros operativos** | 18d | 2010-03-08 09:00 | 2010-03-31 19:00 | 112.12d |  | 56h |
| 136 | 1.4.3.1.1 | 4.3.1.A01 Identificar las unidades de transporte que utilizarán la solución móvil | 1d | 2010-03-31 09:00 | 2010-03-31 19:00 | 112.12d | Marco Soto | 8h |
| 137 | 1.4.3.1.2 | 4.3.1.A02 Instalar las impresoras y suministros en las unidades de transporte identificadas | 4d | 2010-03-08 09:00 | 2010-03-11 19:00 | 126.12d | Marco Soto | 32h |
| 138 | 1.4.3.1.3 | 4.3.1.A03 Validar la operatividad de las impresoras y suministros | 2d | 2010-03-19 09:00 | 2010-03-22 19:00 | 119.12d | Marco Soto | 16h |
| 139 | 1.4.3.2 | **4.3.2 Reporte de implementacion de equipos** | 7.71d | 2010-03-23 11:20 | 2010-04-01 19:00 | 111.12d |  | 16h |
| 140 | 1.4.3.2.1 | 4.3.2.A01 Elaborar el reporte de la etapa 3 | 1d | 2010-04-01 09:00 | 2010-04-01 19:00 | 111.12d | Marco Soto | 8h |
| 141 | 1.4.3.2.2 | 4.3.2.A02 Revisar el reporte de la etapa 3 | 1d | 2010-03-23 11:20 | 2010-03-24 11:20 | 117.83d | Enrique Madrid | 8h |
| 142 | 1.4.4 | **4.4 Etapa 4** | 7.71d | 2010-03-24 11:20 | 2010-04-02 19:00 | 110.12d |  | 16h |
| 143 | 1.4.4.1 | **4.4.1 Documento solucion a problemas** | 7.71d | 2010-03-24 11:20 | 2010-04-02 19:00 | 110.12d |  | 16h |
| 144 | 1.4.4.1.1 | 4.4.1A01 Elaborar el documento de solucion a problemas. | 1d | 2010-04-02 09:00 | 2010-04-02 19:00 | 110.12d | Marco Soto | 8h |
| 145 | 1.4.4.1.2 | 4.4.1A02 Revisar el reporte de solucion de problemas | 1d | 2010-03-24 11:20 | 2010-03-25 11:20 | 116.83d | Enrique Madrid | 8h |
| 146 | 1.5 | **5.0 Capacitacion** | 14.29d | 2010-03-08 09:00 | 2010-03-26 11:20 | 115.83d |  | 48h |
| 147 | 1.5.1 | **5.1 Dictado** | 2d | 2010-03-08 09:00 | 2010-03-09 19:00 | 128.12d |  | 16h |
| 148 | 1.5.1.1 | 5.1.A01 Realizar la sesion | 2d | 2010-03-08 09:00 | 2010-03-09 19:00 | 128.12d | Lissette Davila | 16h |

| ID | WBS | Task | Duration | Start | Finish | Total slack | Resources | Work |
| --- | --- | --- | --- | --- | --- | --- | --- | --- |
| 149 | 1.5.2 | **5.2 Control de evaluacion** | 2d | 2010-03-10 09:00 | 2010-03-11 19:00 | 126.12d |  | 16h |
| 150 | 1.5.2.1 | 5.2.A01 Elaborar controles de evaluacion | 1d | 2010-03-10 09:00 | 2010-03-10 19:00 | 127.12d | Lissette Davila | 8h |
| 151 | 1.5.2.2 | 5.2.A02 Revisar controles de capacitacion | 1d | 2010-03-11 09:00 | 2010-03-11 19:00 | 126.12d | Lissette Davila | 8h |
| 152 | 1.5.3 | **5.3 Informe** | 10.29d | 2010-03-12 09:00 | 2010-03-26 11:20 | 115.83d |  | 16h |
| 153 | 1.5.3.1 | 5.3.A01 Elaborar el informe de la sesion | 1d | 2010-03-12 09:00 | 2010-03-12 19:00 | 125.12d | Lissette Davila | 8h |
| 154 | 1.5.3.2 | 5.3.A02 Revisar informe | 1d | 2010-03-25 11:20 | 2010-03-26 11:20 | 115.83d | Enrique Madrid | 8h |
| 155 | 1.6 | **6. 0 Salida en vivo** | 2.5d | 2010-03-16 15:00 | 2010-03-18 19:00 | 121.12d |  | 16h |
| 156 | 1.6.1 | 6.0.A1 Puesta en marcha del aplicativo | 2d | 2010-03-16 15:00 | 2010-03-18 19:00 | 121.12d | Marco Soto; Enrique Madrid | 16h |
| 157 | 1.7 | **7.0 Informes** | 21.17d | 2010-03-08 12:00 | 2010-04-06 15:20 | 108.58d |  | 112h |
| 158 | 1.7.1 | **7.1 Informe mensual** | 20.17d | 2010-03-08 12:00 | 2010-04-05 15:20 | 109.58d |  | 96h |
| 159 | 1.7.1.1 | **7.1.1 Informe mes 1** | 15.04d | 2010-03-08 12:00 | 2010-03-29 12:20 | 114.71d |  | 16h |
| 160 | 1.7.1.1.1 | 7.1.1.A01 Elaborar informe mensual 1 | 1d | 2010-03-26 11:20 | 2010-03-29 12:20 | 114.71d | Enrique Madrid | 8h |
| 161 | 1.7.1.1.2 | 7.1.1.A02 Revisar informe 1 | 1d | 2010-03-08 12:00 | 2010-03-09 12:00 | 128.75d | Country Manager | 8h |
| 162 | 1.7.1.2 | **7.1.2 Informe mes 2** | 15.04d | 2010-03-09 12:00 | 2010-03-30 12:20 | 113.71d |  | 16h |
| 163 | 1.7.1.2.1 | 7.1.2.A01 Elaborar informe mensual 2 | 1d | 2010-03-29 12:20 | 2010-03-30 12:20 | 113.71d | Enrique Madrid | 8h |
| 164 | 1.7.1.2.2 | 7.1.2.A02 Revisar informe 2 | 1d | 2010-03-09 12:00 | 2010-03-10 12:00 | 127.75d | Country Manager | 8h |
| 165 | 1.7.1.3 | **7.1.3 Informe mes 3** | 15.04d | 2010-03-10 12:00 | 2010-03-31 12:20 | 112.71d |  | 16h |
| 166 | 1.7.1.3.1 | 7.1.3.A01 Elaborar informe mensual 3 | 1d | 2010-03-30 12:20 | 2010-03-31 12:20 | 112.71d | Enrique Madrid | 8h |
| 167 | 1.7.1.3.2 | 7.1.3.A02 Revisar informe 3 | 1d | 2010-03-10 12:00 | 2010-03-11 12:00 | 126.75d | Country Manager | 8h |
| 168 | 1.7.1.4 | **7.1.4 Informe mes 4** | 15.04d | 2010-03-11 12:00 | 2010-04-01 12:20 | 111.71d |  | 16h |
| 169 | 1.7.1.4.1 | 7.1.4.A01 Elaborar informe mensual 4 | 1d | 2010-03-31 12:20 | 2010-04-01 12:20 | 111.71d | Enrique Madrid | 8h |
| 170 | 1.7.1.4.2 | 7.1.4.A02 Revisar informe 4 | 1d | 2010-03-11 12:00 | 2010-03-12 12:00 | 125.75d | Country Manager | 8h |
| 171 | 1.7.1.5 | **7.1.5 Informe mes 5** | 15.04d | 2010-03-12 12:00 | 2010-04-02 12:20 | 110.71d |  | 16h |
| 172 | 1.7.1.5.1 | 7.1.5.A01 Elaborar informe mensual 5 | 1d | 2010-04-01 12:20 | 2010-04-02 12:20 | 110.71d | Enrique Madrid | 8h |
| 173 | 1.7.1.5.2 | 7.1.5.A02 Revisar informe 5 | 1d | 2010-03-12 12:00 | 2010-03-15 13:00 | 124.62d | Country Manager | 8h |

| ID | WBS | Task | Duration | Start | Finish | Total slack | Resources | Work |
| --- | --- | --- | --- | --- | --- | --- | --- | --- |
| 174 | 1.7.1.6 | **7.1.6 Informe mes 6** | 15.04d | 2010-03-15 15:00 | 2010-04-05 15:20 | 109.58d |  | 16h |
| 175 | 1.7.1.6.1 | 7.1.6.A01 Elaborar informe mensual 6 | 1d | 2010-04-02 12:20 | 2010-04-05 15:20 | 109.58d | Enrique Madrid | 8h |
| 176 | 1.7.1.6.2 | 7.1.6.A02 Revisar informe 6 | 1d | 2010-03-15 15:00 | 2010-03-16 13:00 | 123.62d | Country Manager | 8h |
| 177 | 1.7.2 | **7.2 Informe final** | 15.04d | 2010-03-16 15:00 | 2010-04-06 15:20 | 108.58d |  | 16h |
| 178 | 1.7.2.1 | 7.2.A01 Elaborar informe final | 1d | 2010-04-05 15:20 | 2010-04-06 15:20 | 108.58d | Enrique Madrid | 8h |
| 179 | 1.7.2.2 | 7.2.A02 Revisar informe final | 1d | 2010-03-16 15:00 | 2010-03-17 13:00 | 122.62d | Country Manager | 8h |
